# ipuatsons-WBS

Schedule from MS Project, 2022-08-01 to 2023-03-24, costs in ฿, A marks actual dates.

## Calendars

- Standard: Mon-Fri 08:00-12:00, 13:00-17:00; Sat-Sun off.

## Resources

| Resource | Rate |
| --- | --- |
| Pasin | 80 |
| Sutee | 80 |

## Schedule

| ID | WBS | Task | Type | Duration | Start | Finish | Predecessors | Complete | Remaining | Baseline start | Baseline finish | Baseline duration | Total slack | Resources | Work | Actual work | Cost | Baseline cost | Actual cost |
| --- | --- | --- | --- | --- | --- | --- | --- | --- | --- | --- | --- | --- | --- | --- | --- | --- | --- | --- | --- |
| 1 | 1 | **Requirement Analysis** |  | 7d | 2022-08-01 A | 2022-08-09 |  | 88% | 0.85d | 2022-08-01 | 2022-08-09 | 7d |  |  | 192h | 168.8h | 15,360 | 15,360 | 13,504 |
| 2 | 1.1 | **Develop Project Title** |  | 4d | 2022-08-01 A | 2022-08-04 A |  | 100% |  | 2022-08-01 | 2022-08-04 | 4d |  |  | 80h | 80h | 6,400 | 6,400 | 6,400 |
| 3 | 1.1.1 | กำหนดจุดมุ่งหมายและขอบเขตการทำงาน |  | 1d | 2022-08-01 A | 2022-08-01 A |  | 100% |  | 2022-08-01 | 2022-08-01 | 1d |  | Pasin; Sutee | 16h | 16h | 1,280 | 1,280 | 1,280 |
| 4 | 1.1.2 | Develop, Review, Approval - Project Title |  | 4d | 2022-08-01 A | 2022-08-04 A |  | 100% |  | 2022-08-01 | 2022-08-04 | 4d |  | Pasin; Sutee | 64h | 64h | 5,120 | 5,120 | 5,120 |
| 5 | 1.2 | **Develop Preliminary Project Scope Statement** |  | 3d | 2022-08-05 A | 2022-08-09 | 2 | 79% | 0.62d | 2022-08-05 | 2022-08-09 | 3d | 0d |  | 112h | 88.8h | 8,960 | 8,960 | 7,104 |
| 6 | 1.2.1 | กำหนด Functional Requirements |  | 3d | 2022-08-05 A | 2022-08-09 |  | 90% | 0.3d | 2022-08-05 | 2022-08-09 | 3d | 0d | Pasin; Sutee | 48h | 43.2h | 3,840 | 3,840 | 3,456 |
| 7 | 1.2.2 | กำหนด Non Functional Requirements |  | 3d | 2022-08-05 A | 2022-08-09 |  | 70% | 0.9d | 2022-08-05 | 2022-08-09 | 3d | 0d | Pasin; Sutee | 48h | 33.6h | 3,840 | 3,840 | 2,688 |
| 8 | 1.2.3 | กำหนดระยะเวลาการทำงาน |  | 1d | 2022-08-05 A | 2022-08-05 |  | 75% | 0.25d | 2022-08-05 | 2022-08-05 | 1d | 2d | Pasin; Sutee | 16h | 12h | 1,280 | 1,280 | 960 |
| 9 | 2 | **Design Phase** |  | 14d | 2022-08-09 A | 2022-08-29 | 1 | 55% | 6.3d | 2022-08-09 | 2022-08-29 | 14d |  |  | 232h | 134.9h | 18,560 | 18,560 | 10,792 |
| 10 | 2.1 | ออกแบบ UX/UI |  | 5d | 2022-08-10 A | 2022-08-16 |  | 37% | 3.16d | 2022-08-10 | 2022-08-16 | 5d | 2d | Pasin | 40h | 14.7h | 3,200 | 3,200 | 1,176 |
| 11 | 2.2 | วาด Use Case Diagram |  | 3d | 2022-08-10 A | 2022-08-12 |  | 61% | 1.16d | 2022-08-10 | 2022-08-12 | 3d | 4d | Pasin; Sutee | 48h | 29.4h | 3,840 | 3,840 | 2,352 |
| 12 | 2.3 | ออกแบบ Database |  | 2d | 2022-08-10 A | 2022-08-11 |  | 92% | 0.16d | 2022-08-10 | 2022-08-11 | 2d | 5d | Pasin; Sutee | 32h | 29.4h | 2,560 | 2,560 | 2,352 |
| 13 | 2.4 | ประมวลภาพรวมการออกแบบครั้งที่ 1 |  | 0.5d | 2022-08-10 A | 2022-08-10 A |  | 100% |  | 2022-08-10 | 2022-08-10 | 0.5d |  | Pasin; Sutee | 8h | 8h | 640 | 640 | 640 |
| 14 | 2.5 | วาด Object Diagram |  | 1d | 2022-08-10 A | 2022-08-10 A |  | 100% |  | 2022-08-10 | 2022-08-10 | 1d |  | Pasin; Sutee | 16h | 16h | 1,280 | 1,280 | 1,280 |
| 15 | 2.6 | วาด Sequence Diagram |  | 5d | 2022-08-10 A | 2022-08-16 |  | 37% | 3.16d | 2022-08-10 | 2022-08-16 | 5d | 2d | Pasin; Sutee | 80h | 29.4h | 6,400 | 6,400 | 2,352 |
| 16 | 2.7 | ประมวลภาพรวมการออกแบบครั้งที่ 2 |  | 0.5d | 2022-08-10 A | 2022-08-10 A |  | 100% |  | 2022-08-10 | 2022-08-10 | 0.5d |  | Pasin; Sutee | 8h | 8h | 640 | 640 | 640 |
| 17 | 2.8 | Design Phase เสร็จสิ้น | milestone | 0d | 2022-08-09 A | 2022-08-09 A |  | 100% |  | 2022-08-09 | 2022-08-09 | 0d |  |  |  |  |  |  |  |
| 18 | 3 | **Implementation - 1st** |  | 81d? | 2022-08-19 A | 2022-12-09 | 9 | 20% | 65.01d? | 2022-08-19 | 2022-12-09 | 81d |  |  | 1436h | 225.4h | 114,880 | 113,600 | 18,032 |
| 19 | 3.1 | **Tools Study** |  | 8d | 2022-08-19 A | 2022-08-30 | 9 | 75% | 2d | 2022-08-19 | 2022-09-01 | 10d |  |  | 160h | 120h | 12,800 | 12,160 | 9,600 |
| 20 | 3.1.1 | เรียนรู้เกี่ยวกับ Vuet js |  | 3d | 2022-08-19 A | 2022-08-23 A |  | 100% |  | 2022-08-19 | 2022-08-22 | 2d |  | Pasin | 24h | 24h | 1,920 | 1,280 | 1,920 |
| 21 | 3.1.2 | เรียนรู้เกี่ยวกับ Django |  | 4d | 2022-08-24 A | 2022-08-29 A | 20 | 100% |  | 2022-08-19 | 2022-08-23 | 3d |  | Pasin | 32h | 32h | 2,560 | 1,920 | 2,560 |
| 22 | 3.1.3 | เรียนรู้เกี่ยวกับ MongoDB |  | 2d | 2022-08-30 A | 2022-08-31 | 21 | 25% | 1.5d | 2022-08-19 | 2022-08-22 | 2d | 131d | Pasin | 16h | 4h | 1,280 | 1,280 | 320 |
| 23 | 3.1.4 | เรียนรู้เกี่ยวกับ Ubuntu Server |  | 1d | 2022-08-19 A | 2022-08-19 A |  | 100% |  | 2022-08-19 | 2022-08-19 | 1d |  | Sutee | 8h | 8h | 640 | 640 | 640 |
| 24 | 3.1.7 | เรียนรู้เกี่ยวกับ Docker |  | 2d | 2022-08-22 A | 2022-08-23 A | 23 | 100% |  | 2022-08-19 | 2022-08-22 | 2d |  | Sutee | 16h | 16h | 1,280 | 1,280 | 1,280 |
| 25 | 3.1.8 | เรียนรู้เกี่ยวกับ Nginx |  | 2d | 2022-08-24 A | 2022-08-25 A | 24 | 100% |  | 2022-08-19 | 2022-08-22 | 2d |  | Sutee | 16h | 16h | 1,280 | 1,280 | 1,280 |
| 26 | 3.1.5 | เรียนรู้เกี่ยวกับ Kubernetes |  | 2d | 2022-08-26 A | 2022-08-29 A | 25 | 100% |  | 2022-08-19 | 2022-08-22 | 2d |  | Sutee | 16h | 16h | 1,280 | 1,280 | 1,280 |
| 27 | 3.1.6 | เรียนรู้เกี่ยวกับ Microk8s, K3D, K3S |  | 4d | 2022-08-30 A | 2022-09-02 | 26 | 13% | 3.5d | 2022-08-19 | 2022-08-25 | 5d | 129d | Sutee | 32h | 4h | 2,560 | 3,200 | 320 |
| 28 | 3.2 | เขียน Progress report #1 | manual | 1d | 2022-08-22 A | 2022-08-22 A | 19 | 100% |  | 2022-08-22 | 2022-08-25 | 1d |  | Pasin; Sutee | 16h | 16h | 1,280 | 1,280 | 1,280 |
| 29 | 3.3 | progress report #1 | milestone, manual | 0d | 2022-08-26 A | 2022-08-26 A |  | 100% |  | 2022-08-26 | 2022-08-26 | 0d |  | Pasin; Sutee |  |  |  |  |  |

| ID | WBS | Task | Type | Duration | Start | Finish | Predecessors | Complete | Remaining | Baseline start | Baseline finish | Baseline duration | Total slack | Resources | Work | Actual work | Cost | Baseline cost | Actual cost |
| --- | --- | --- | --- | --- | --- | --- | --- | --- | --- | --- | --- | --- | --- | --- | --- | --- | --- | --- | --- |
| 30 | 3.2 | **Coding Plan** |  | 1d | 2022-08-30 A | 2022-08-31 A | 19 | 100% |  | 2022-09-02 | 2022-09-02 | 1d |  |  | 48h | 48h | 3,840 | 3,200 | 3,840 |
| 31 | 3.2.1 | กำหนด Directory ในการทำงาน |  | 1d | 2022-08-31 A | 2022-08-31 A |  | 100% |  | 2022-09-02 | 2022-09-02 | 1d |  | Pasin; Sutee | 16h | 16h | 1,280 | 1,280 | 1,280 |
| 32 | 3.2.2 | กำหนด Version ของ framework และ libary ที่ใช้ |  | 1d | 2022-08-31 A | 2022-08-31 A |  | 100% |  | 2022-09-02 | 2022-09-02 | 1d |  | Pasin; Sutee | 16h | 16h | 1,280 | 1,280 | 1,280 |
| 33 | 3.4.3 | สร้าง และ ตั้งค่า Docker |  | 1d | 2022-08-31 A | 2022-08-31 A |  | 100% |  |  |  |  |  | Sutee | 8h | 8h | 640 |  | 640 |
| 34 | 3.2.3 | สร้าง และ ตั้งค่า Github |  | 1d | 2022-08-30 A | 2022-08-31 A |  | 100% |  | 2022-09-02 | 2022-09-02 | 1d |  | Sutee; Pasin | 8h | 8h | 640 | 640 | 640 |
| 35 | 3.3 | **Account & Login Page** |  | 7d | 2022-09-05 A | 2022-09-13 | 30 | 47% | 3.7d | 2022-09-05 | 2022-09-13 | 7d |  |  | 88h | 41.4h | 7,040 | 7,040 | 3,312 |
| 36 | 3.3.1 | พัฒนาส่วน Front End |  | 3d | 2022-09-05 A | 2022-09-07 |  | 48% | 1.57d | 2022-09-05 | 2022-09-07 | 3d | 80d | Pasin | 24h | 11.4h | 1,920 | 1,920 | 912 |
| 37 | 3.3.2 | พัฒนาส่วน Backend & API |  | 3d | 2022-09-05 A | 2022-09-07 |  | 48% | 1.57d | 2022-09-05 | 2022-09-07 | 3d | 80d | Pasin; Sutee | 48h | 22.8h | 3,840 | 3,840 | 1,824 |
| 38 | 3.3.3 | ทดสอบ |  | 1d | 2022-09-05 A | 2022-09-05 |  | 45% | 0.55d | 2022-09-05 | 2022-09-05 | 1d | 82d | Pasin; Sutee | 16h | 7.2h | 1,280 | 1,280 | 576 |
| 39 | 3.6 | เขียน Progress report #2 | manual | 5d | 2022-09-05 | 2022-09-09 |  |  |  | 2022-09-05 | 2022-09-09 | 5d |  | Pasin; Sutee | 80h |  | 6,400 | 6,400 |  |
| 40 | 3.7 | progress report #2 | milestone, manual | 0d | 2022-09-09 | 2022-09-09 |  |  |  | 2022-09-09 | 2022-09-09 | 0d |  |  |  |  |  |  |  |
| 41 | 3.4 | **Feed Page** |  | 7d | 2022-09-12 | 2022-09-20 | 35 |  |  | 2022-09-12 | 2022-09-20 | 7d |  |  | 128h |  | 10,240 | 10,240 |  |
| 42 | 3.4.1 | พัฒนาส่วน Front End |  | 5d | 2022-09-12 | 2022-09-16 |  |  |  | 2022-09-12 | 2022-09-16 | 5d | 78d | Pasin | 40h |  | 3,200 | 3,200 |  |
| 43 | 3.4.2 | พัฒนาส่วน Backend & API |  | 5d | 2022-09-12 | 2022-09-16 |  |  |  | 2022-09-12 | 2022-09-16 | 5d | 78d | Pasin; Sutee | 80h |  | 6,400 | 6,400 |  |
| 44 | 3.4.3 | ทดสอบ |  | 0.5d | 2022-09-12 | 2022-09-12 |  |  |  | 2022-09-12 | 2022-09-12 | 0.5d | 82.5d | Pasin; Sutee | 8h |  | 640 | 640 |  |
| 45 | 3.5 | **Drive Page** |  | 10d | 2022-09-21 | 2022-10-04 | 41 |  |  | 2022-09-21 | 2022-10-04 | 10d |  |  | 128h |  | 10,240 | 10,240 |  |
| 46 | 3.5.1 | พัฒนาส่วน Front End |  | 5d | 2022-09-21 | 2022-09-27 |  |  |  | 2022-09-21 | 2022-09-27 | 5d | 76d | Pasin | 40h |  | 3,200 | 3,200 |  |
| 47 | 3.5.2 | พัฒนาส่วน Backend & API |  | 5d | 2022-09-21 | 2022-09-27 |  |  |  | 2022-09-21 | 2022-09-27 | 5d | 76d | Pasin; Sutee | 80h |  | 6,400 | 6,400 |  |
| 48 | 3.5.3 | ทดสอบ |  | 0.5d | 2022-09-21 | 2022-09-21 |  |  |  | 2022-09-21 | 2022-09-21 | 0.5d | 80.5d | Pasin; Sutee | 8h |  | 640 | 640 |  |
| 49 | 3.10 | เขียน Progress report #3 | manual | 4d | 2022-09-19 | 2022-09-22 |  |  |  | 2022-09-19 | 2022-09-22 | 4d |  | Pasin; Sutee | 64h |  | 5,120 | 5,120 |  |
| 50 | 3.11 | progress report #3 | milestone, manual | 0d | 2022-09-23 | 2022-09-23 |  |  |  | 2022-09-23 | 2022-09-23 | 0d |  |  |  |  |  |  |  |
| 51 | 3.6 | **Application page** |  | 14d | 2022-10-25 | 2022-11-11 | 45FS+14d |  |  | 2022-10-25 | 2022-11-11 | 14d |  |  | 128h |  | 10,240 | 10,240 |  |
| 52 | 3.6.1 | พัฒนาส่วน Front End |  | 5d | 2022-10-25 | 2022-10-31 |  |  |  | 2022-10-25 | 2022-10-31 | 5d | 71d | Pasin | 40h |  | 3,200 | 3,200 |  |
| 53 | 3.6.2 | พัฒนาส่วน Backend & API |  | 5d | 2022-10-25 | 2022-10-31 |  |  |  | 2022-10-25 | 2022-10-31 | 5d | 71d | Pasin; Sutee | 80h |  | 6,400 | 6,400 |  |
| 54 | 3.6.3 | ทดสอบ |  | 0.5d | 2022-10-25 | 2022-10-25 |  |  |  | 2022-10-25 | 2022-10-25 | 0.5d | 75.5d | Pasin; Sutee | 8h |  | 640 | 640 |  |

| ID | WBS | Task | Type | Duration | Start | Finish | Predecessors | Baseline start | Baseline finish | Baseline duration | Total slack | Free slack | Constraint | Resources | Work | Cost | Baseline cost |
| --- | --- | --- | --- | --- | --- | --- | --- | --- | --- | --- | --- | --- | --- | --- | --- | --- | --- |
| 55 | 3.7 | **Setting Page** |  | 5d | 2022-11-14 | 2022-11-18 | 51 | 2022-11-14 | 2022-11-18 | 5d |  |  |  |  | 48h | 3,840 | 3,840 |
| 56 | 3.7.1 | พัฒนาส่วน Front End |  | 1d | 2022-11-14 | 2022-11-14 |  | 2022-11-14 | 2022-11-14 | 1d | 63d |  |  | Pasin | 8h | 640 | 640 |
| 57 | 3.7.2 | พัฒนาส่วน Backend & API |  | 2d | 2022-11-14 | 2022-11-15 |  | 2022-11-14 | 2022-11-15 | 2d | 62d |  |  | Pasin; Sutee | 32h | 2,560 | 2,560 |
| 58 | 3.7.3 | ทดสอบ |  | 0.5d | 2022-11-14 | 2022-11-14 |  | 2022-11-14 | 2022-11-14 | 0.5d | 63.5d |  |  | Pasin; Sutee | 8h | 640 | 640 |
| 59 | 3.8 | **Server** |  | 14d? | 2022-09-05 | 2022-09-22 | 30 | 2022-09-05 | 2022-09-22 | 14d |  |  |  |  | 84h | 6,720 | 6,720 |
| 60 | 3.8.1 | ติดตั้ง OS สำหรับ Server และสร้าง VM |  | 5d | 2022-09-05 | 2022-09-09 |  | 2022-09-05 | 2022-09-09 | 5d | 109d |  |  | Sutee | 40h | 3,200 | 3,200 |
| 61 | 3.8.2 | ตั้งค่า Network ของ Server |  | 5d | 2022-09-05 | 2022-09-09 |  | 2022-09-05 | 2022-09-09 | 5d | 109d |  |  | Sutee | 40h | 3,200 | 3,200 |
| 62 | 3.8.3 | ติดตั้งระบบ Cluster Kubernetes (MicroK8S) |  | 0.5d | 2022-09-05 | 2022-09-05 |  | 2022-09-05 | 2022-09-05 | 0.5d | 113.5d |  |  | Sutee | 4h | 320 | 320 |
| 63 | 3.14.4 | สร้างระบบ Dashboard | manual | 1d? | 2022-09-05 | 2022-09-05 |  | 2022-09-05 | 2022-09-05 | 1d? |  |  |  |  |  |  |  |
| 64 | 3.15 | เขียน Progress report #4 | manual | 4d | 2022-10-17 | 2022-10-20 |  | 2022-10-17 | 2022-10-20 | 4d |  |  |  | Pasin; Sutee | 64h | 5,120 | 5,120 |
| 65 | 3.16 | progress report #4 - report chapter #1 | milestone, manual | 0d | 2022-10-21 | 2022-10-21 |  | 2022-10-21 | 2022-10-21 | 0d |  |  |  |  |  |  |  |
| 66 | 3.9 | **1st Test Plan** |  | 3d | 2022-11-21 | 2022-11-23 | 35, 41, 45, 51, 55, 59 | 2022-11-21 | 2022-11-23 | 3d |  |  |  |  | 80h | 6,400 | 6,400 |
| 67 | 3.9.1 | ทดสอบการเชื่อมต่อกันระหว่าง Web Application และ Server |  | 2d | 2022-11-21 | 2022-11-22 |  | 2022-11-21 | 2022-11-22 | 2d | 60d |  |  | Pasin; Sutee | 32h | 2,560 | 2,560 |
| 68 | 3.9.2 | ประมวลผลการทดสอบ |  | 3d | 2022-11-21 | 2022-11-23 |  | 2022-11-21 | 2022-11-23 | 3d | 59d |  |  | Pasin; Sutee | 48h | 3,840 | 3,840 |
| 69 | 3.10 | **Mock Demo - 1st** |  | 7d | 2022-11-24 | 2022-12-02 | 66 | 2022-11-24 | 2022-12-02 | 7d | 59d | 0d |  |  | 128h | 10,240 | 10,240 |
| 70 | 3.10.1 | ทดสอบการกับกลุ่มผู้ใช้กลุ่มหนึง |  | 7d | 2022-11-24 | 2022-12-02 |  | 2022-11-24 | 2022-12-02 | 7d | 59d |  |  | Pasin; Sutee | 112h | 8,960 | 8,960 |
| 71 | 3.10.2 | ประเมินความพึงพอใจ |  | 1d | 2022-11-24 | 2022-11-24 |  | 2022-11-24 | 2022-11-24 | 1d | 65d |  |  | Pasin; Sutee | 16h | 1,280 | 1,280 |
| 72 | 3.11 | **การปรับปรุงจากผลตอบรับ - 1st** |  | 5d | 2022-12-05 | 2022-12-09 | 69 | 2022-12-05 | 2022-12-09 | 5d | 59d |  |  |  | 128h | 10,240 | 10,240 |
| 73 | 3.11.1 | พัฒนาส่วน Front End เพิ่มเติมจากผลการประเมินจากผู้ใช้ |  | 5d | 2022-12-05 | 2022-12-09 |  | 2022-12-05 | 2022-12-09 | 5d | 59d |  |  | Pasin | 40h | 3,200 | 3,200 |
| 74 | 3.11.2 | พัฒนาส่วน Backend & API เพิ่มเติมจากผลการประเมินจากผู้ใช้ |  | 5d | 2022-12-05 | 2022-12-09 |  | 2022-12-05 | 2022-12-09 | 5d | 59d |  |  | Pasin; Sutee | 80h | 6,400 | 6,400 |
| 75 | 3.11.3 | ทดสอบ |  | 0.5d | 2022-12-05 | 2022-12-05 |  | 2022-12-05 | 2022-12-05 | 0.5d | 63.5d |  |  | Pasin; Sutee | 8h | 640 | 640 |
| 76 | 3.20 | เขียน Progress report #5 | manual | 4d | 2022-10-31 | 2022-11-03 |  | 2022-10-31 | 2022-11-03 | 4d |  |  |  | Pasin; Sutee | 64h | 5,120 | 5,120 |
| 77 | 3.21 | progress report #5 - report chapter #2 | milestone, manual | 0d | 2022-11-04 | 2022-11-04 |  | 2022-11-04 | 2022-11-04 | 0d |  |  |  |  |  |  |  |
| 78 | 4 | progress report #6 - report chapter #1 | milestone, manual | 0d | 2022-11-25 | 2022-11-25 |  | 2022-11-25 | 2022-11-25 | 0d |  |  |  |  |  |  |  |
| 79 | 5 | ส่งเล่มรายงานและไฟล์รายงานสำหรับสอบโครงการ 1 |  | 1d | 2022-12-09 | 2022-12-09 |  | 2022-12-09 | 2022-12-09 | 1d | 75d |  | start no earlier than 2022-12-09 |  |  |  |  |
| 80 | 6 | สอบโครงการ 1 | milestone, manual | 0d | 2022-12-16 | 2022-12-16 |  | 2022-12-16 | 2022-12-16 | 0d |  |  |  |  |  |  |  |

| ID | WBS | Task | Duration | Start | Finish | Predecessors | Baseline start | Baseline finish | Baseline duration | Total slack | Free slack | Resources | Work | Cost | Baseline cost |
| --- | --- | --- | --- | --- | --- | --- | --- | --- | --- | --- | --- | --- | --- | --- | --- |
| 81 | 4 | **Implementation - 2nd** | 60d | 2023-01-02 | 2023-03-24 | 80FS+15d | 2023-01-02 | 2023-03-24 | 60d |  |  |  | 460h | 36,800 | 54,720 |
| 82 | 4.1 | **Application Page - model processing** | 2d | 2023-01-02 | 2023-01-03 | 18 | 2023-01-02 | 2023-01-03 | 2d | 44d | 0d |  | 48h | 3,840 | 3,840 |
| 83 | 4.1.1 | พัฒนาส่วน Front End | 1d | 2023-01-02 | 2023-01-02 |  | 2023-01-02 | 2023-01-02 | 1d | 45d |  | Pasin | 8h | 640 | 640 |
| 84 | 4.1.2 | พัฒนาส่วน Backend & API | 2d | 2023-01-02 | 2023-01-03 |  | 2023-01-02 | 2023-01-03 | 2d | 44d |  | Pasin; Sutee | 32h | 2,560 | 2,560 |
| 85 | 4.1.3 | ทดสอบ | 0.5d | 2023-01-02 | 2023-01-02 |  | 2023-01-02 | 2023-01-02 | 0.5d | 45.5d |  | Pasin; Sutee | 8h | 640 | 640 |
| 86 | 4.2 | **Market Place Page** | 2d | 2023-01-04 | 2023-01-05 | 82 | 2023-01-04 | 2023-01-05 | 2d | 44d | 0d |  | 48h | 3,840 | 3,840 |
| 87 | 4.2.1 | พัฒนาส่วน Front End | 1d | 2023-01-04 | 2023-01-04 |  | 2023-01-04 | 2023-01-04 | 1d | 45d |  | Pasin | 8h | 640 | 640 |
| 88 | 4.2.2 | พัฒนาส่วน Backend & API | 2d | 2023-01-04 | 2023-01-05 |  | 2023-01-04 | 2023-01-05 | 2d | 44d |  | Pasin; Sutee | 32h | 2,560 | 2,560 |
| 89 | 4.2.3 | ทดสอบ | 0.5d | 2023-01-04 | 2023-01-04 |  | 2023-01-04 | 2023-01-04 | 0.5d | 45.5d |  | Pasin; Sutee | 8h | 640 | 640 |
| 90 | 4.3 | **Model Uplaod Page** | 2d | 2023-01-04 | 2023-01-05 | 82 | 2023-01-04 | 2023-01-05 | 2d | 44d | 0d |  | 32h | 2,560 | 2,560 |
| 91 | 4.3.1 | พัฒนาส่วน Front End | 1d | 2023-01-04 | 2023-01-04 |  | 2023-01-04 | 2023-01-04 | 1d | 45d |  | Pasin | 8h | 640 | 640 |
| 92 | 4.3.2 | พัฒนาส่วน Backend & API | 2d | 2023-01-04 | 2023-01-05 |  | 2023-01-04 | 2023-01-05 | 2d | 44d |  | Sutee | 16h | 1,280 | 1,280 |
| 93 | 4.3.3 | ทดสอบ | 0.5d | 2023-01-04 | 2023-01-04 |  | 2023-01-04 | 2023-01-04 | 0.5d | 45.5d |  | Pasin; Sutee | 8h | 640 | 640 |
| 94 | 4.4 | **Server** | 1d | 2023-01-02 | 2023-01-02 | 18 | 2023-01-02 | 2023-01-02 | 1d | 47d | 3d |  | 12h | 960 | 960 |
| 95 | 4.4.1 | พัฒนา Performance ของ Server | 1d | 2023-01-02 | 2023-01-02 |  | 2023-01-02 | 2023-01-02 | 1d | 47d |  | Sutee | 8h | 640 | 640 |
| 96 | 4.4.3 | ทดสอบ | 0.5d | 2023-01-02 | 2023-01-02 |  | 2023-01-02 | 2023-01-02 | 0.5d | 47.5d |  | Sutee | 4h | 320 | 320 |
| 97 | 4.5 | **Mock Demo - 2nd** | 1d | 2023-01-06 | 2023-01-06 | 82, 86, 90, 94 | 2023-01-06 | 2023-01-06 | 1d | 44d | 0d |  | 32h | 2,560 | 2,560 |
| 98 | 4.5.1 | ทดสอบการกับกลุ่มผู้ใช้กลุ่มหนึง | 1d | 2023-01-06 | 2023-01-06 |  | 2023-01-06 | 2023-01-06 | 1d | 44d |  | Pasin; Sutee | 16h | 1,280 | 1,280 |
| 99 | 4.5.2 | ประเมินความพึงพอใจ | 1d | 2023-01-06 | 2023-01-06 |  | 2023-01-06 | 2023-01-06 | 1d | 44d |  | Pasin; Sutee | 16h | 1,280 | 1,280 |
| 100 | 4.6 | **การปรับปรุงจากผลตอบรับ - 2st** | 5d | 2023-01-09 | 2023-01-13 | 97 | 2023-01-09 | 2023-01-13 | 5d | 44d | 0d |  | 128h | 10,240 | 10,240 |
| 101 | 4.6.1 | พัฒนาส่วน Front End เพิ่มเติมจากผลการประเมินจากผู้ใช้ | 5d | 2023-01-09 | 2023-01-13 |  | 2023-01-09 | 2023-01-13 | 5d | 44d |  | Pasin | 40h | 3,200 | 3,200 |
| 102 | 4.6.2 | พัฒนาส่วน Backend & API เพิ่มเติมจากผลการประเมินจากผู้ใช้ | 5d | 2023-01-09 | 2023-01-13 |  | 2023-01-09 | 2023-01-13 | 5d | 44d |  | Pasin; Sutee | 80h | 6,400 | 6,400 |
| 103 | 4.6.3 | ทดสอบ | 0.5d | 2023-01-09 | 2023-01-09 |  | 2023-01-09 | 2023-01-09 | 0.5d | 48.5d |  | Pasin; Sutee | 8h | 640 | 640 |
| 104 | 4.7 | **Mock Demo - 3rd** | 1d | 2023-01-16 | 2023-01-16 | 100 | 2023-01-16 | 2023-01-16 | 1d | 44d | 0d |  | 32h | 2,560 | 2,560 |
| 105 | 4.7.1 | ทดสอบการกับกลุ่มผู้ใช้กลุ่มหนึง | 1d | 2023-01-16 | 2023-01-16 |  | 2023-01-16 | 2023-01-16 | 1d | 44d |  | Pasin; Sutee | 16h | 1,280 | 1,280 |
| 106 | 4.7.2 | ประเมินความพึงพอใจ | 1d | 2023-01-16 | 2023-01-16 |  | 2023-01-16 | 2023-01-16 | 1d | 44d |  | Pasin; Sutee | 16h | 1,280 | 1,280 |

| ID | WBS | Task | Type | Duration | Start | Finish | Predecessors | Baseline start | Baseline finish | Baseline duration | Total slack | Free slack | Resources | Work | Cost | Baseline cost |
| --- | --- | --- | --- | --- | --- | --- | --- | --- | --- | --- | --- | --- | --- | --- | --- | --- |
| 107 | 4.8 | **การปรับปรุงจากผลตอบรับ - 3rd** |  | 5d | 2023-01-17 | 2023-01-23 | 104 | 2023-01-17 | 2023-01-23 | 5d | 44d | 0d |  | 128h | 10,240 | 10,240 |
| 108 | 4.8.1 | พัฒนาส่วน Front End เพิ่มเติมจากผลการประเมินจากผู้ใช้ |  | 5d | 2023-01-17 | 2023-01-23 |  | 2023-01-17 | 2023-01-23 | 5d | 44d |  | Pasin | 40h | 3,200 | 3,200 |
| 109 | 4.8.2 | พัฒนาส่วน Backend & API เพิ่มเติมจากผลการประเมินจากผู้ใช้ |  | 5d | 2023-01-17 | 2023-01-23 |  | 2023-01-17 | 2023-01-23 | 5d | 44d |  | Pasin; Sutee | 80h | 6,400 | 6,400 |
| 110 | 4.8.3 | ทดสอบ |  | 0.5d | 2023-01-17 | 2023-01-17 |  | 2023-01-17 | 2023-01-17 | 0.5d | 48.5d |  | Pasin; Sutee | 8h | 640 | 640 |
| 111 | 4.9 | **เอกสารบทที่ 4-6** | inactive | 7d | 2023-01-24 | 2023-02-01 | 107 | 2023-01-24 | 2023-02-01 | 7d | 37d |  |  | 224h | 17,920 | 17,920 |
| 112 | 4.9.1 | เขียนเอกสาร | inactive | 7d | 2023-01-24 | 2023-02-01 |  | 2023-01-24 | 2023-02-01 | 7d | 37d |  | Pasin; Sutee | 112h | 8,960 | 8,960 |
| 113 | 4.9.2 | ส่งให้อาจารย์ที่ปรึกษา และ แก้ไข | inactive | 7d | 2023-01-24 | 2023-02-01 |  | 2023-01-24 | 2023-02-01 | 7d | 37d |  | Pasin; Sutee | 112h | 8,960 | 8,960 |
